# samvia-231400054

Schedule from MS Project, 2026-09-01 to 2026-10-30, costs in $, A marks actual dates.

## Calendars

- Standard: Mon-Fri 08:00-12:00, 13:00-17:00; Sat-Sun off.

## Resources

| Resource | Rate |
| --- | --- |
| Project manger | 60 |
| Businees analyst | 50 |
| ui/ux design | 45 |
| Backend Develpoer | 70 |
| Frontend develeoper | 65 |
| QA Engineer | 55 |
| Data base Admininstrator | 65 |
| DevOps Engineer | 75 |
| Security Analysit | 80 |
| Intern develpoer | 20 |
| System Analyst | 30 |
| Techinal Writer |  |

## Schedule

| ID | WBS | Task | Type | Duration | Start | Finish | Predecessors | Complete | Remaining | Baseline start | Baseline finish | Baseline duration | Baseline 1 start | Baseline 1 finish | Total slack | Free slack | Resources | Work | Actual work | Cost | Baseline cost | Actual cost |
| --- | --- | --- | --- | --- | --- | --- | --- | --- | --- | --- | --- | --- | --- | --- | --- | --- | --- | --- | --- | --- | --- | --- |
| 4 | 1 | Smart Clinic Appointment Management System |  | 1d | 2026-09-01 | 2026-09-01 |  |  |  | 2026-09-01 | 2026-09-01 | 1d | 2026-09-01 | 2026-09-01 | 43d |  |  |  |  |  |  |  |
| 5 | 2 | **Project Initiation** |  | 2d | 2026-09-01 A | 2026-09-02 |  | 50% | 1d | 2026-09-01 | 2026-09-02 | 2d | 2026-09-01 | 2026-09-02 | 42d |  | Project manger | 32h | 16h | 1,760 | 1,760 | 880 |
| 6 | 2.1 | Identify Stakeholder |  | 1d | 2026-09-01 A | 2026-09-01 A |  | 100% |  | 2026-09-01 | 2026-09-01 | 1d | 2026-09-01 | 2026-09-01 |  |  | Businees analyst | 8h | 8h | 400 | 400 | 400 |
| 7 | 2.2 | Define Project Scope |  | 1d | 2026-09-02 | 2026-09-02 | 6 |  |  | 2026-09-02 | 2026-09-02 | 1d | 2026-09-02 | 2026-09-02 | 42d | 0d | Businees analyst | 8h |  | 400 | 400 |  |
| 8 | 2.3 | Project Charter | milestone | 0d | 2026-09-02 | 2026-09-02 | 7 |  |  | 2026-09-02 | 2026-09-02 | 0d | 2026-09-02 | 2026-09-02 | 42d |  | Project manger |  |  |  |  |  |
| 9 | 3 | **Requirement Gathering** |  | 8d | 2026-09-03 A | 2026-09-14 |  | 25% | 6d | 2026-09-03 | 2026-09-14 | 8d | 2026-09-03 | 2026-09-14 | 0d |  |  | 56h | 16h | 3,200 | 3,200 | 800 |
| 10 | 3.1 | Stakeholder Interview |  | 2d | 2026-09-03 A | 2026-09-04 A | 8 | 100% |  | 2026-09-03 | 2026-09-04 | 2d | 2026-09-03 | 2026-09-04 |  |  | Businees analyst | 16h | 16h | 800 | 800 | 800 |
| 11 | 3.2 | Functional Requirement |  | 2d | 2026-09-07 | 2026-09-08 | 10 |  |  | 2026-09-07 | 2026-09-08 | 2d | 2026-09-07 | 2026-09-08 | 0d |  | Businees analyst | 16h |  | 800 | 800 |  |
| 12 | 3.3 | NFR |  | 2d | 2026-09-09 | 2026-09-10 | 11 |  |  | 2026-09-09 | 2026-09-10 | 2d | 2026-09-09 | 2026-09-10 | 0d |  | Security Analysit [50%] | 8h |  | 640 | 640 |  |
| 13 | 3.4 | Review & Sign Requirement |  | 2d | 2026-09-11 | 2026-09-14 | 12 |  |  | 2026-09-11 | 2026-09-14 | 2d | 2026-09-11 | 2026-09-14 | 0d |  | Project manger | 16h |  | 960 | 960 |  |
| 14 | 4 | **System Analysis** |  | 4d | 2026-09-15 | 2026-09-18 |  |  |  | 2026-09-15 | 2026-09-18 | 4d | 2026-09-15 | 2026-09-18 | 0d |  |  | 24h |  | 1,440 | 1,440 |  |
| 15 | 4.1 | Functional Analysis |  | 2d | 2026-09-15 | 2026-09-16 | 13 |  |  | 2026-09-15 | 2026-09-16 | 2d | 2026-09-15 | 2026-09-16 | 0d |  | Businees analyst | 16h |  | 800 | 800 |  |
| 16 | 4.2 | NFR Analysis |  | 2d | 2026-09-17 | 2026-09-18 | 15 |  |  | 2026-09-17 | 2026-09-18 | 2d | 2026-09-17 | 2026-09-18 | 0d |  | Security Analysit [50%] | 8h |  | 640 | 640 |  |
| 17 | 5 | **UI/UX Design** |  | 4d | 2026-09-21 | 2026-09-24 |  |  |  | 2026-09-21 | 2026-09-24 | 4d | 2026-09-21 | 2026-09-24 | 0d |  |  | 32h |  | 1,760 | 1,760 |  |
| 18 | 5.1 | Prototype Design |  | 2d | 2026-09-21 | 2026-09-22 | 16 |  |  | 2026-09-21 | 2026-09-22 | 2d | 2026-09-21 | 2026-09-22 | 0d |  | Project manger | 16h |  | 960 | 960 |  |
| 19 | 5.2 | Wireframe |  | 2d | 2026-09-23 | 2026-09-24 | 18 |  |  | 2026-09-23 | 2026-09-24 | 2d | 2026-09-23 | 2026-09-24 | 0d |  | Businees analyst | 16h |  | 800 | 800 |  |
| 20 | 6 | **Database Design** |  | 5d | 2026-09-25 | 2026-10-01 |  |  |  | 2026-09-25 | 2026-10-01 | 5d | 2026-09-25 | 2026-10-01 | 0d |  |  | 24h |  | 1,760 | 1,760 |  |
| 21 | 6.1 | ER Design |  | 4d | 2026-09-25 | 2026-09-30 | 19 |  |  | 2026-09-25 | 2026-09-30 | 4d | 2026-09-25 | 2026-09-30 | 0d |  | Security Analysit [50%] | 16h |  | 1,280 | 1,280 |  |
| 22 | 6.2 | Database Schema |  | 1d | 2026-10-01 | 2026-10-01 | 21 |  |  | 2026-10-01 | 2026-10-01 | 1d | 2026-10-01 | 2026-10-01 | 0d |  | Project manger | 8h |  | 480 | 480 |  |
| 23 | 6.3 | Review Database | milestone | 0d | 2026-10-01 | 2026-10-01 | 22 |  |  | 2026-10-01 | 2026-10-01 | 0d | 2026-10-01 | 2026-10-01 | 0d |  | Businees analyst |  |  |  |  |  |
| 24 | 7 | **Application Development** |  | 8d | 2026-10-02 | 2026-10-13 |  |  |  | 2026-10-02 | 2026-10-13 | 8d | 2026-10-02 | 2026-10-13 | 0d |  |  | 60h |  | 2,840 | 2,840 |  |
| 25 | 7.1 | Setup Environment |  | 1d | 2026-10-02 | 2026-10-02 | 23 |  |  | 2026-10-02 | 2026-10-02 | 1d | 2026-10-02 | 2026-10-02 | 0d |  | Security Analysit [50%] | 4h |  | 320 | 320 |  |
| 26 | 7.2 | System Module Development |  | 4d | 2026-10-05 | 2026-10-08 | 25 |  |  | 2026-10-05 | 2026-10-08 | 4d | 2026-10-05 | 2026-10-08 | 0d |  | ui/ux design | 32h |  | 1,440 | 1,440 |  |
| 27 | 7.3 | Integrate All Module |  | 3d | 2026-10-09 | 2026-10-13 | 26 |  |  | 2026-10-09 | 2026-10-13 | 3d | 2026-10-09 | 2026-10-13 | 0d |  | ui/ux design | 24h |  | 1,080 | 1,080 |  |

| ID | WBS | Task | Type | Duration | Start | Finish | Predecessors | Baseline start | Baseline finish | Baseline duration | Baseline 1 start | Baseline 1 finish | Total slack | Resources | Work | Cost | Baseline cost |
| --- | --- | --- | --- | --- | --- | --- | --- | --- | --- | --- | --- | --- | --- | --- | --- | --- | --- |
| 28 | 8 | **Testing** |  | 6d | 2026-10-14 | 2026-10-21 |  | 2026-10-14 | 2026-10-21 | 6d | 2026-10-14 | 2026-10-21 | 0d |  | 48h | 3,120 | 3,120 |
| 29 | 8.1 | Test Case |  | 2d | 2026-10-14 | 2026-10-15 | 27 | 2026-10-14 | 2026-10-15 | 2d | 2026-10-14 | 2026-10-15 | 0d | Data base Admininstrator | 16h | 1,040 | 1,040 |
| 30 | 8.2 | Integration Testing |  | 2d | 2026-10-16 | 2026-10-19 | 29 | 2026-10-16 | 2026-10-19 | 2d | 2026-10-16 | 2026-10-19 | 0d | Data base Admininstrator | 16h | 1,040 | 1,040 |
| 31 | 8.3 | Unit Testing |  | 2d | 2026-10-20 | 2026-10-21 | 30 | 2026-10-20 | 2026-10-21 | 2d | 2026-10-20 | 2026-10-21 | 0d | Data base Admininstrator | 16h | 1,040 | 1,040 |
| 32 | 9 | **Development** |  | 6d | 2026-10-22 | 2026-10-29 |  | 2026-10-22 | 2026-10-29 | 6d | 2026-10-22 | 2026-10-29 | 0d |  | 48h | 3,440 | 3,440 |
| 33 | 9.1 | Production Environment |  | 2d | 2026-10-22 | 2026-10-23 | 31 | 2026-10-22 | 2026-10-23 | 2d | 2026-10-22 | 2026-10-23 | 0d | DevOps Engineer | 16h | 1,200 | 1,200 |
| 34 | 9.2 | User Training |  | 4d | 2026-10-26 | 2026-10-29 | 33 | 2026-10-26 | 2026-10-29 | 4d | 2026-10-26 | 2026-10-29 | 0d | Backend Develpoer | 32h | 2,240 | 2,240 |
| 35 | 10 | **Project Closure** |  | 1d | 2026-10-30 | 2026-10-30 |  | 2026-10-30 | 2026-10-30 | 1d | 2026-10-30 | 2026-10-30 | 0d |  | 6h | 330 | 330 |
| 36 | 10.1 | Client Sign Off |  | 1d | 2026-10-30 | 2026-10-30 | 34 | 2026-10-30 | 2026-10-30 | 1d | 2026-10-30 | 2026-10-30 | 0d | QA Engineer [75%] | 6h | 330 | 330 |
| 37 | 10.2 | Project Closed | milestone | 0d | 2026-10-30 | 2026-10-30 | 36 | 2026-10-30 | 2026-10-30 | 0d | 2026-10-30 | 2026-10-30 | 0d | QA Engineer [75%] |  |  |  |
